# Cronograma_SGCONT

Schedule from MS Project, 2013-03-05 to 2013-05-27, 2 hours a day, A marks actual dates.
Microsoft

## Calendars

- Reduzido: Mon-Fri 08:00-09:00, 13:00-14:00; Sat-Sun off.

## Resources

| Resource |
| --- |
| Sávio Luiz |
| Vivianne Sousa |
| Rômulo Aurélio |
| Sávio Luiz/Rômulo Aurêlio |
| Mariana Victor |
| Vinícius Medeiros |
| vivia |
| Vivi |

## Schedule

| ID | WBS | Task | Duration | Start | Finish | Predecessors | Complete | Constraint | Resources | Work | Actual work |
| --- | --- | --- | --- | --- | --- | --- | --- | --- | --- | --- | --- |
| 1 | 1 | Ata de Reunião 04/03 | 2h | 2013-03-05 08:00 A | 2013-03-05 14:00 A |  | 100% | start no earlier than 2013-03-05 08:00 | Sávio Luiz | 2h | 2h |
| 2 | 2 | Ata de Reunião 11/03 | 2h | 2013-03-12 08:00 A | 2013-03-12 14:00 A |  | 100% |  | Sávio Luiz | 2h | 2h |
| 3 | 3 | **Planejamento** | 12d | 2013-03-12 08:00 A | 2013-03-27 14:00 A |  | 100% |  |  | 81.92h | 81.92h |
| 4 | 3.1 | Criação do Cronograma | 6h | 2013-03-12 08:00 A | 2013-03-14 14:00 A |  | 100% | start no earlier than 2013-03-12 08:00 | Sávio Luiz | 6h | 6h |
| 5 | 3.2 | Criação da Sprint de Março | 2h | 2013-03-15 08:00 A | 2013-03-18 14:00 A | 4 | 100% |  | Sávio Luiz | 2h | 2h |
| 6 | 3.3 | Criação do Cronograma | 6h | 2013-03-12 08:00 A | 2013-03-14 14:00 A |  | 100% |  | Rômulo Aurélio | 11.92h | 11.92h |
| 7 | 3.4 | Documento de Visão (Planejamento do Projeto) | 4h | 2013-03-15 08:00 A | 2013-03-18 14:00 A | 6 | 100% | start no earlier than 2013-03-14 08:00 | Rômulo Aurélio | 4h | 4h |
| 8 | 3.5 | Termo de Abertura | 4h | 2013-03-19 08:00 A | 2013-03-20 14:00 A | 7 | 100% | start no earlier than 2013-03-13 08:00 | Rômulo Aurélio | 4h | 4h |
| 9 | 3.6 | Definição das metodologias | 4h | 2013-03-21 08:00 A | 2013-03-22 14:00 A | 8 | 100% |  | Rômulo Aurélio | 4h | 4h |
| 10 | 3.7 | Glossário | 8h | 2013-03-13 08:00 A | 2013-03-18 14:00 A |  | 100% | start no earlier than 2013-03-13 08:00 | Vivianne Sousa | 8h | 8h |
| 11 | 3.8 | Documento de Requisitos | 2h | 2013-03-19 08:00 A | 2013-03-19 14:00 A | 10 | 100% | start no earlier than 2013-03-14 08:00 | Vivianne Sousa | 2h | 2h |
| 12 | 3.9 | Levantamento e Criação da Arquitetura | 24h | 2013-03-12 08:00 A | 2013-03-27 14:00 A |  | 100% |  | Mariana Victor | 24h | 24h |
| 13 | 3.10 | Layout de Telas | 16h | 2013-03-12 08:00 A | 2013-03-21 14:00 A |  | 100% |  | Vinícius Medeiros | 16h | 16h |
| 14 | 4 | **Gerencia de Configuração** | 29d | 2013-03-22 08:00 A | 2013-05-01 14:00 A |  | 100% |  |  | 58h | 58h |
| 15 | 4.1 | Desenvolvimento do Plano de Configuração | 8h | 2013-03-22 08:00 A | 2013-03-27 14:00 A | 13 | 100% |  | Vinícius Medeiros | 8h | 8h |
| 16 | 4.2 | Criação, gerenciamento e organização do Controle de Versão – Subversion | 16h | 2013-03-28 08:00 A | 2013-04-08 14:00 A | 15 | 100% |  | Vinícius Medeiros | 16h | 16h |
| 17 | 4.3 | - Criação, gerenciamento e organização do Controle de Mudanças – Redmine | 16h | 2013-04-09 08:00 A | 2013-04-18 14:00 A | 16 | 100% |  | Vinícius Medeiros | 16h | 16h |
| 18 | 4.4 | Auditoria do repositório (cumprimento dos padrões, respeito à organização, etc.) | 12h | 2013-04-19 08:00 A | 2013-04-26 14:00 A | 17 | 100% |  | Vinícius Medeiros | 12h | 12h |
| 19 | 4.5 | Release Notes – Será desenvolvido a cada versão publicada do sistema | 6h | 2013-04-29 08:00 A | 2013-05-01 14:00 A | 18 | 100% |  | Vinícius Medeiros | 6h | 6h |
| 20 | 5 | **Especificações e diagrama de caso de uso** | 11d | 2013-03-20 08:00 A | 2013-04-03 14:00 A |  | 100% |  |  | 29h | 29h |
| 21 | 5.1 | Informar Empresa Contábil | 1h | 2013-03-20 08:00 A | 2013-03-20 09:00 A | 11 | 100% |  | Vivianne Sousa | 1h | 1h |
| 22 | 5.2 | Inserir Cliente | 4h | 2013-03-20 13:00 A | 2013-03-22 09:00 A | 21 | 100% |  | Vivianne Sousa | 4h | 4h |
| 23 | 5.3 | Manter Cliente | 4h | 2013-03-22 13:00 A | 2013-03-26 09:00 A | 22 | 100% |  | Vivianne Sousa | 4h | 4h |
| 24 | 5.4 | Inserir Contador | 1h | 2013-03-26 13:00 A | 2013-03-26 14:00 A | 23 | 100% |  | Vivianne Sousa | 1h | 1h |
| 25 | 5.5 | Manter Contador | 2h | 2013-03-27 08:00 A | 2013-03-27 14:00 A | 24 | 100% |  | Vivianne Sousa | 2h | 2h |
| 26 | 5.6 | Inserir Usuário | 1h | 2013-03-28 08:00 A | 2013-03-28 09:00 A | 25 | 100% |  | Vivianne Sousa | 1h | 1h |
| 27 | 5.7 | Manter Usuário | 2h | 2013-03-28 13:00 A | 2013-03-29 09:00 A | 26 | 100% |  | Vivianne Sousa | 2h | 2h |
| 28 | 5.8 | Informar Agenda | 7h | 2013-03-25 08:00 A | 2013-03-28 09:00 A | 9 | 100% |  | Rômulo Aurélio | 7h | 7h |
| 29 | 5.9 | Inserir Despesa | 1h | 2013-03-29 13:00 A | 2013-03-29 14:00 A | 27 | 100% |  | Vivianne Sousa | 1h | 1h |
| 30 | 5.10 | Manter Despesa | 2h | 2013-04-01 08:00 A | 2013-04-01 14:00 A | 29 | 100% |  | Vivianne Sousa | 2h | 2h |
| 31 | 5.11 | Inserir Receita | 1h | 2013-04-02 08:00 A | 2013-04-02 09:00 A | 30 | 100% |  | Vivianne Sousa | 1h | 1h |
| 32 | 5.12 | Manter Receita | 2h | 2013-04-02 13:00 A | 2013-04-03 09:00 A | 31 | 100% |  | Vivianne Sousa | 2h | 2h |
| 33 | 5.13 | Efetuar Login | 1h | 2013-04-03 13:00 A | 2013-04-03 14:00 A | 32 | 100% |  | Vivianne Sousa | 1h | 1h |
| 34 | 6 | Manual de utilização | 24h | 2013-05-02 08:00 A | 2013-05-17 14:00 A | 19 | 100% |  | Vinícius Medeiros | 24h | 24h |

| ID | WBS | Task | Type | Duration | Start | Finish | Predecessors | Complete | Resources | Work | Actual work |
| --- | --- | --- | --- | --- | --- | --- | --- | --- | --- | --- | --- |
| 35 | 7 | **Arquitetura** |  | 48.75d | 2013-03-20 08:00 A | 2013-05-27 13:30 A |  | 100% |  | 258h | 258h |
| 36 | 7.1 | Documento de Arquitetura |  | 6h | 2013-03-28 08:00 A | 2013-04-01 14:00 A | 12 | 100% | Mariana Victor | 6h | 6h |
| 37 | 7.2 | **Diagramas UML** |  | 11.5d | 2013-03-20 08:00 A | 2013-04-04 09:00 A |  | 100% |  | 24.5h | 24.5h |
| 38 | 7.2.1 | Diagrama de Arquitetura - Revisão/Atualização |  | 2h | 2013-04-02 08:00 A | 2013-04-02 14:00 A | 36 | 100% | Mariana Victor | 2h | 2h |
| 39 | 7.2.2 | **Diagrama de Classes** |  | 11.5d | 2013-03-20 08:00 A | 2013-04-04 09:00 A |  | 100% |  | 17h | 17h |
| 40 | 7.2.2.1 | Efetuar Login - Revisão/Atualização |  | 0.5h | 2013-03-20 08:00 A | 2013-03-20 08:30 A |  | 100% | Sávio Luiz | 0.5h | 0.5h |
| 41 | 7.2.2.2 | Inserir Empresa Contábil - Revisão/Atualização |  | 0.5h | 2013-03-20 08:30 A | 2013-03-20 09:00 A | 40 | 100% | Sávio Luiz | 0.5h | 0.5h |
| 42 | 7.2.2.3 | Inserir Cliente - Revisão/Atualização |  | 2h | 2013-03-20 13:00 A | 2013-03-21 09:00 A | 41 | 100% | Sávio Luiz | 2h | 2h |
| 43 | 7.2.2.4 | Manter Cliente - Criação |  | 2h | 2013-03-21 13:00 A | 2013-03-22 09:00 A | 42 | 100% | Sávio Luiz | 2h | 2h |
| 44 | 7.2.2.5 | Inserir Despesa - Revisão/Atualização |  | 0.5h | 2013-03-22 13:00 A | 2013-03-22 13:30 A | 43 | 100% | Sávio Luiz | 0.5h | 0.5h |
| 45 | 7.2.2.6 | Manter Despesa - Criação |  | 1h | 2013-03-22 13:30 A | 2013-03-25 08:30 A | 44 | 100% | Sávio Luiz | 1h | 1h |
| 46 | 7.2.2.7 | Inserir Receita - Revisão/Atualização |  | 0.5h | 2013-03-25 08:30 A | 2013-03-25 09:00 A | 45 | 100% | Sávio Luiz | 0.5h | 0.5h |
| 47 | 7.2.2.8 | Manter Receita - Criação |  | 1h | 2013-03-25 13:00 A | 2013-03-25 14:00 A | 46 | 100% | Sávio Luiz | 1h | 1h |
| 48 | 7.2.2.9 | Inserir Contador - Criação |  | 1.5h | 2013-03-26 08:00 A | 2013-03-26 13:30 A | 47 | 100% | Sávio Luiz | 1.5h | 1.5h |
| 49 | 7.2.2.10 | Manter Contador - Criação |  | 1.5h | 2013-03-26 13:30 A | 2013-03-27 09:00 A | 48 | 100% | Sávio Luiz | 1.5h | 1.5h |
| 50 | 7.2.2.11 | Inserir Usuário - Criação |  | 1.5h | 2013-03-27 13:00 A | 2013-03-28 08:30 A | 49 | 100% | Sávio Luiz | 1.5h | 1.5h |
| 51 | 7.2.2.12 | Manter Usuário - Criação |  | 1.5h | 2013-03-28 08:30 A | 2013-03-28 14:00 A | 50 | 100% | Sávio Luiz | 1.5h | 1.5h |
| 52 | 7.2.2.13 | Inserir Setor - Criação | milestone | 0h | 2013-03-28 14:00 A | 2013-03-28 14:00 A | 51 | 100% | Sávio Luiz |  |  |
| 53 | 7.2.2.14 | Manter Setor - Criação | milestone | 0h | 2013-03-28 14:00 A | 2013-03-28 14:00 A | 52 | 100% | Sávio Luiz |  |  |
| 54 | 7.2.2.15 | Informar Agenda - Criação |  | 3h | 2013-04-03 08:00 A | 2013-04-04 09:00 A | 38 | 100% | Mariana Victor | 3h | 3h |
| 55 | 7.2.3 | **Diagrama de Seqüência** |  | 2.5d | 2013-03-27 08:00 A | 2013-03-29 09:00 A |  | 100% |  | 5h | 5h |
| 56 | 7.2.3.1 | Efetuar Login - Revisão/Atualização |  | 0.5h | 2013-03-27 08:00 A | 2013-03-27 08:30 A | 28 | 100% | Rômulo Aurélio | 0.5h | 0.5h |
| 57 | 7.2.3.2 | Inserir Cliente - Revisão/Atualização |  | 1h | 2013-03-27 08:30 A | 2013-03-27 13:30 A | 56 | 100% | Rômulo Aurélio | 1h | 1h |
| 58 | 7.2.3.3 | Inserir Despesa - Revisão/Atualização |  | 0.5h | 2013-03-27 13:30 A | 2013-03-27 14:00 A | 57 | 100% | Rômulo Aurélio | 0.5h | 0.5h |
| 59 | 7.2.3.4 | Inserir Receita - Revisão/Atualização |  | 0.5h | 2013-03-28 08:00 A | 2013-03-28 08:30 A | 58 | 100% | Rômulo Aurélio | 0.5h | 0.5h |
| 60 | 7.2.3.5 | Inserir Empresa Contábil - Revisão/Atualização |  | 0.5h | 2013-03-28 08:30 A | 2013-03-28 09:00 A | 59 | 100% | Rômulo Aurélio | 0.5h | 0.5h |
| 61 | 7.2.3.6 | Informar Agenda |  | 2h | 2013-03-28 13:00 A | 2013-03-29 09:00 A | 60 | 100% | Rômulo Aurélio | 2h | 2h |
| 62 | 7.2.4 | Diagrama de Distribuição - Revisão/Atualização |  | 0.5h | 2013-03-29 13:00 A | 2013-03-29 13:30 A | 61 | 100% | Rômulo Aurélio | 0.5h | 0.5h |
| 63 | 7.3 | Modelo de Banco de Dados - Revisão/Atualização |  | 8h | 2013-04-01 13:00 A | 2013-04-05 09:00 A | 53 | 100% | Sávio Luiz | 8h | 8h |

| ID | WBS | Task | Duration | Start | Finish | Predecessors | Complete | Resources | Work | Actual work |
| --- | --- | --- | --- | --- | --- | --- | --- | --- | --- | --- |
| 64 | 7.4 | **Implementação** | 31.75d | 2013-03-29 13:30 A | 2013-05-14 09:00 A |  | 100% |  | 136h | 136h |
| 65 | 7.4.1 | Efetuar Login | 4h | 2013-03-29 13:30 A | 2013-04-02 13:30 A | 62 | 100% | Mariana Victor | 4h | 4h |
| 66 | 7.4.2 | Inserir Empresa Contábil | 8h | 2013-04-04 08:00 A | 2013-04-09 14:00 A | 33 | 100% | Vivianne Sousa | 8h | 8h |
| 67 | 7.4.3 | Inserir Cliente | 16h | 2013-04-04 13:00 A | 2013-04-16 09:00 A | 54 | 100% | Mariana Victor | 16h | 16h |
| 68 | 7.4.4 | Manter Cliente | 18h | 2013-04-10 08:00 A | 2013-04-22 14:00 A | 66 | 100% | Vivianne Sousa | 18h | 18h |
| 69 | 7.4.5 | Inserir Despesa | 4h | 2013-04-23 08:00 A | 2013-04-24 14:00 A | 68 | 100% | Vivianne Sousa | 4h | 4h |
| 70 | 7.4.6 | Manter Despesa | 6h | 2013-04-25 08:00 A | 2013-04-29 14:00 A | 69 | 100% | Vivianne Sousa | 6h | 6h |
| 71 | 7.4.7 | Inserir Receita | 4h | 2013-03-29 13:30 A | 2013-04-02 13:30 A | 62 | 100% | Rômulo Aurélio | 4h | 4h |
| 72 | 7.4.8 | Manter Receita | 6h | 2013-04-02 13:30 A | 2013-04-05 13:30 A | 71 | 100% | Rômulo Aurélio | 6h | 6h |
| 73 | 7.4.9 | Inserir Contador | 4h | 2013-04-05 13:30 A | 2013-04-09 13:30 A | 72 | 100% | Rômulo Aurélio | 4h | 4h |
| 74 | 7.4.10 | Manter Contador | 6h | 2013-04-09 13:30 A | 2013-04-12 13:30 A | 73 | 100% | Rômulo Aurélio | 6h | 6h |
| 75 | 7.4.11 | Inserir Usuário | 8h | 2013-04-12 13:30 A | 2013-04-18 13:30 A | 74 | 100% | Rômulo Aurélio | 8h | 8h |
| 76 | 7.4.12 | Manter Usuário | 12h | 2013-04-18 13:30 A | 2013-04-26 13:30 A | 75 | 100% | Rômulo Aurélio | 12h | 12h |
| 77 | 7.4.13 | Informar Agenda | 40h | 2013-04-16 13:00 A | 2013-05-14 09:00 A | 67 | 100% | Mariana Victor | 40h | 40h |
| 78 | 7.5 | Manual de instalação (implantação) - Criação | 8h | 2013-05-20 08:00 A | 2013-05-23 14:00 A | 34 | 100% | Vinícius Medeiros | 8h | 8h |
| 79 | 7.6 | **Testes** | 36.25d | 2013-04-05 13:00 A | 2013-05-27 13:30 A |  | 100% |  | 75.5h | 75.5h |
| 80 | 7.6.1 | Plano de testes | 4h | 2013-04-05 13:00 A | 2013-04-11 08:12 A | 63 | 100% | Sávio Luiz | 4h | 4h |
| 81 | 7.6.2 | Projeto de testes | 4h | 2013-04-05 13:00 A | 2013-04-11 08:36 A | 80 | 100% | Sávio Luiz | 4h | 4h |
| 82 | 7.6.3 | **Registros dos testes** | 34.25d | 2013-04-09 13:00 A | 2013-05-27 13:30 A |  | 100% |  | 67.5h | 67.5h |
| 83 | 7.6.3.1 | **Casos de Teste** | 10.25d | 2013-04-09 13:00 A | 2013-04-23 13:30 A |  | 100% |  | 18.5h | 18.5h |
| 84 | 7.6.3.1.1 | Efetuar Login | 0.5h | 2013-04-09 13:00 A | 2013-04-09 13:30 A | 81 | 100% | Sávio Luiz | 0.5h | 0.5h |
| 85 | 7.6.3.1.2 | Inserir Empresa Contábil | 2h | 2013-04-09 13:30 A | 2013-04-10 13:30 A | 84 | 100% | Sávio Luiz | 2h | 2h |
| 86 | 7.6.3.1.3 | Inserir Cliente | 2h | 2013-04-10 13:30 A | 2013-04-11 13:30 A | 85 | 100% | Sávio Luiz | 2h | 2h |
| 87 | 7.6.3.1.4 | Manter Cliente | 2h | 2013-04-11 13:30 A | 2013-04-12 13:30 A | 86 | 100% | Sávio Luiz | 2h | 2h |
| 88 | 7.6.3.1.5 | Inserir Despesa | 1h | 2013-04-12 13:30 A | 2013-04-15 08:30 A | 87 | 100% | Sávio Luiz | 1h | 1h |
| 89 | 7.6.3.1.6 | Manter Despesa | 1h | 2013-04-15 08:30 A | 2013-04-15 13:30 A | 88 | 100% | Sávio Luiz | 1h | 1h |
| 90 | 7.6.3.1.7 | Inserir Receita | 1h | 2013-04-15 13:30 A | 2013-04-16 08:30 A | 89 | 100% | Sávio Luiz | 1h | 1h |
| 91 | 7.6.3.1.8 | Manter Receita | 1h | 2013-04-16 08:30 A | 2013-04-16 13:30 A | 90 | 100% | Sávio Luiz | 1h | 1h |
| 92 | 7.6.3.1.9 | Inserir Contador | 1h | 2013-04-16 13:30 A | 2013-04-17 08:30 A | 91 | 100% | Sávio Luiz | 1h | 1h |
| 93 | 7.6.3.1.10 | Manter Contador | 1h | 2013-04-17 08:30 A | 2013-04-17 13:30 A | 92 | 100% | Sávio Luiz | 1h | 1h |
| 94 | 7.6.3.1.11 | Inserir Usuário | 1h | 2013-04-17 13:30 A | 2013-04-18 08:30 A | 93 | 100% | Sávio Luiz | 1h | 1h |
| 95 | 7.6.3.1.12 | Manter Usuário | 1h | 2013-04-18 08:30 A | 2013-04-18 13:30 A | 94 | 100% | Sávio Luiz | 1h | 1h |
| 96 | 7.6.3.1.13 | Informar Agenda | 4h | 2013-04-19 13:30 A | 2013-04-23 13:30 A | 95 | 100% | Sávio Luiz | 4h | 4h |

| ID | WBS | Task | Duration | Start | Finish | Predecessors | Complete | Resources | Work | Actual work |
| --- | --- | --- | --- | --- | --- | --- | --- | --- | --- | --- |
| 97 | 7.6.3.2 | **Automatização de Testes** | 7.25d | 2013-04-19 08:30 A | 2013-04-30 09:00 A |  | 100% |  | 14.5h | 14.5h |
| 98 | 7.6.3.2.1 | Efetuar Login | 0.5h | 2013-04-19 08:30 A | 2013-04-19 09:00 A |  | 100% | Sávio Luiz | 0.5h | 0.5h |
| 99 | 7.6.3.2.2 | Inserir Empresa Contábil | 2h | 2013-04-19 13:00 A | 2013-04-22 09:00 A | 98 | 100% | Sávio Luiz | 2h | 2h |
| 100 | 7.6.3.2.3 | Inserir Cliente | 2h | 2013-04-22 13:00 A | 2013-04-23 09:00 A | 99 | 100% | Sávio Luiz | 2h | 2h |
| 101 | 7.6.3.2.4 | Manter Cliente | 2h | 2013-04-23 13:00 A | 2013-04-24 09:00 A | 100 | 100% | Sávio Luiz | 2h | 2h |
| 102 | 7.6.3.2.5 | Inserir Despesa | 1h | 2013-04-24 13:00 A | 2013-04-24 14:00 A | 101 | 100% | Sávio Luiz | 1h | 1h |
| 103 | 7.6.3.2.6 | Manter Despesa | 1h | 2013-04-25 08:00 A | 2013-04-25 09:00 A | 102 | 100% | Sávio Luiz | 1h | 1h |
| 104 | 7.6.3.2.7 | Inserir Receita | 1h | 2013-04-25 13:00 A | 2013-04-25 14:00 A | 103 | 100% | Sávio Luiz | 1h | 1h |
| 105 | 7.6.3.2.8 | Manter Receita | 1h | 2013-04-26 08:00 A | 2013-04-26 09:00 A | 104 | 100% | Sávio Luiz | 1h | 1h |
| 106 | 7.6.3.2.9 | Inserir Contador | 1h | 2013-04-26 13:00 A | 2013-04-26 14:00 A | 105 | 100% | Sávio Luiz | 1h | 1h |
| 107 | 7.6.3.2.10 | Manter Contador | 1h | 2013-04-29 08:00 A | 2013-04-29 09:00 A | 106 | 100% | Sávio Luiz | 1h | 1h |
| 108 | 7.6.3.2.11 | Inserir Usuário | 1h | 2013-04-29 13:00 A | 2013-04-29 14:00 A | 107 | 100% | Sávio Luiz | 1h | 1h |
| 109 | 7.6.3.2.12 | Manter Usuário | 1h | 2013-04-30 08:00 A | 2013-04-30 09:00 A | 108 | 100% | Sávio Luiz | 1h | 1h |
| 110 | 7.6.3.3 | **Execução de Testes** | 9.25d | 2013-05-02 13:00 A | 2013-05-15 13:30 A |  | 100% |  | 18.5h | 18.5h |
| 111 | 7.6.3.3.1 | Efetuar Login | 0.5h | 2013-05-02 13:00 A | 2013-05-02 13:30 A | 109 | 100% | Sávio Luiz | 0.5h | 0.5h |
| 112 | 7.6.3.3.2 | Inserir Empresa Contábil | 2h | 2013-05-02 13:30 A | 2013-05-03 13:30 A | 111 | 100% | Sávio Luiz | 2h | 2h |
| 113 | 7.6.3.3.3 | Inserir Cliente | 2h | 2013-05-03 13:30 A | 2013-05-06 13:30 A | 112 | 100% | Sávio Luiz | 2h | 2h |
| 114 | 7.6.3.3.4 | Manter Cliente | 2h | 2013-05-06 13:30 A | 2013-05-07 13:30 A | 113 | 100% | Sávio Luiz | 2h | 2h |
| 115 | 7.6.3.3.5 | Inserir Despesa | 1h | 2013-05-07 13:30 A | 2013-05-08 08:30 A | 114 | 100% | Sávio Luiz | 1h | 1h |
| 116 | 7.6.3.3.6 | Manter Despesa | 1h | 2013-05-08 08:30 A | 2013-05-08 13:30 A | 115 | 100% | Sávio Luiz | 1h | 1h |
| 117 | 7.6.3.3.7 | Inserir Receita | 1h | 2013-05-08 13:30 A | 2013-05-09 08:30 A | 116 | 100% | Sávio Luiz | 1h | 1h |
| 118 | 7.6.3.3.8 | Manter Receita | 1h | 2013-05-09 08:30 A | 2013-05-09 13:30 A | 117 | 100% | Sávio Luiz | 1h | 1h |
| 119 | 7.6.3.3.9 | Inserir Contador | 1h | 2013-05-09 13:30 A | 2013-05-10 08:30 A | 118 | 100% | Sávio Luiz | 1h | 1h |
| 120 | 7.6.3.3.10 | Manter Contador | 1h | 2013-05-10 08:30 A | 2013-05-10 13:30 A | 119 | 100% | Sávio Luiz | 1h | 1h |
| 121 | 7.6.3.3.11 | Inserir Usuário | 1h | 2013-05-10 13:30 A | 2013-05-13 08:30 A | 120 | 100% | Sávio Luiz | 1h | 1h |
| 122 | 7.6.3.3.12 | Manter Usuário | 1h | 2013-05-13 08:30 A | 2013-05-13 13:30 A | 121 | 100% | Sávio Luiz | 1h | 1h |
| 123 | 7.6.3.3.13 | Informar Agenda | 4h | 2013-05-13 13:30 A | 2013-05-15 13:30 A | 122 | 100% | Sávio Luiz | 4h | 4h |
| 124 | 7.6.3.4 | Teste Integração | 16h | 2013-05-15 13:30 A | 2013-05-27 13:30 A | 123 | 100% | Sávio Luiz | 16h | 16h |
